# iBaby时间资源估计及工作包排序

How a schedule from MS Project changed from version to version. A marks actual dates.

## Version 1 (saved 2020-04-24)

| ID | WBS | Task | Duration | Start | Finish | Predecessors | Total float |
| --- | --- | --- | --- | --- | --- | --- | --- |
| 1 | 1 | **启动** | 6d | 2020-03-16 | 2020-03-24 |  | 0d |
| 2 |  | 任命项目经理 | 1d | 2020-03-16 | 2020-03-17 |  | 0d |
| 3 |  | 组建核心团队 | 2d | 2020-03-17 | 2020-03-19 | 2 | 1d |
| 4 |  | 干系人分析 | 1d | 2020-03-19 | 2020-03-20 | 2 | 0d |
| 5 |  | 里程碑计划 | 1d | 2020-03-17 | 2020-03-18 | 2 | 2d |
| 6 |  | 制定项目章程 | 1d | 2020-03-20 | 2020-03-23 | 3, 4, 5 | 0d |
| 7 |  | 项目启动大会 | 1d | 2020-03-23 | 2020-03-24 | 6 | 0d |
| 8 | 2 | **规划** | 29d? | 2020-03-24 | 2020-05-04 |  | 0d |
| 9 | 2.1 | **规划范围** | 14d? | 2020-03-24 | 2020-04-13 |  | 0d |
| 10 |  | 制定范围管理计划 | 1d? | 2020-03-24 | 2020-03-25 | 7 | 0d |
| 11 |  | 制定需求说明书 | 5d | 2020-03-25 | 2020-04-01 | 10 | 0d |
| 12 |  | 界面设计 | 3d | 2020-04-06 | 2020-04-09 | 11 | 0d |
| 13 |  | 详细设计说明书 | 3d | 2020-04-01 | 2020-04-06 | 11 | 3d |
| 14 |  | 范围说明书 | 2d | 2020-04-01 | 2020-04-03 | 11 | 4d |
| 15 |  | 创建WBS | 1d | 2020-04-09 | 2020-04-10 | 12, 13, 14 | 0d |
| 16 |  | 形成范围基准 | 1d | 2020-04-10 | 2020-04-13 | 15 | 0d |
| 17 | 2.2 | **规划时间** | 8d | 2020-04-13 | 2020-04-23 |  | 0d |
| 18 |  | 排列工作包顺序 | 1d | 2020-04-13 | 2020-04-14 | 16 | 0d |
| 19 |  | 估算资源 | 1d | 2020-04-14 | 2020-04-15 | 18 | 0d |
| 20 |  | 估算持续时间 | 1d | 2020-04-20 | 2020-04-21 | 19 | 0d |
| 21 |  | 制定进度计划 | 1d | 2020-04-21 | 2020-04-22 | 20 | 0d |
| 22 |  | 形成进度基准 | 1d | 2020-04-22 | 2020-04-23 | 21 | 0d |
| 23 | 2.3 | **规划成本** | 3d | 2020-04-23 | 2020-04-28 |  | 0d |
| 24 |  | 项目成本估算 | 1d | 2020-04-23 | 2020-04-24 | 22 | 0d |
| 25 |  | 项目预算 | 1d | 2020-04-24 | 2020-04-27 | 24 | 0d |
| 26 |  | 形成成本基准 | 1d | 2020-04-27 | 2020-04-28 | 25 | 0d |
| 27 | 2.4 | **规划质量** | 6d | 2020-04-13 | 2020-04-21 |  | 5d |
| 28 |  | 制定测试计划 | 1d | 2020-04-13 | 2020-04-14 | 16 | 5d |
| 29 |  | 制定测试用例 | 5d | 2020-04-14 | 2020-04-21 | 28 | 5d |
| 30 | 2.5 | **规划人力资源** | 2d | 2020-04-15 | 2020-04-17 |  | 7d |
| 31 |  | 制定人力资源计划 | 1d | 2020-04-15 | 2020-04-16 | 19 | 7d |
| 32 |  | 制定人员配备管理计划 | 1d | 2020-04-16 | 2020-04-17 | 31 | 7d |
| 33 | 2.6 | **规划沟通** | 1d | 2020-04-17 | 2020-04-20 |  | 10d |
| 34 |  | 制定沟通管理计划 | 1d | 2020-04-17 | 2020-04-20 | 32 | 10d |
| 35 | 2.7 | **规划采购** | 2d? | 2020-04-15 | 2020-04-17 |  | 11d |
| 36 |  | 自制外购分析 | 1d? | 2020-04-15 | 2020-04-16 | 19 | 11d |
| 37 |  | 制定采购文件 | 1d? | 2020-04-16 | 2020-04-17 | 36 | 11d |
| 38 | 2.8 | **规划风险** | 3d | 2020-04-28 | 2020-05-01 |  | 0d |
| 39 |  | 识别风险 | 1d | 2020-04-28 | 2020-04-29 | 17, 23, 27, 30 | 0d |
| 40 |  | 风险分析 | 1d | 2020-04-29 | 2020-04-30 | 39 | 0d |
| 41 |  | 制定风险登记册 | 1d | 2020-04-30 | 2020-05-01 | 40 | 0d |
| 42 |  | 规划整合 | 1d | 2020-05-01 | 2020-05-04 | 41 | 0d |
| 43 | 3 | **执行与监控** | 28d | 2020-05-04 | 2020-06-11 |  |  |
| 44 |  | 组建项目团队 | 2d | 2020-05-04 | 2020-05-06 | 8 | 0d |
| 45 | 3.2 | **项目执行** | 23d | 2020-05-08 | 2020-06-09 |  |  |
| 46 | 3.2.1 | **我的模块** | 23d | 2020-05-08 | 2020-06-09 |  |  |
| 47 |  | 登录注册 | 3d | 2020-05-11 | 2020-05-14 | 44 | 1.12d |
| 48 |  | 我的收藏 | 2d | 2020-05-14 | 2020-05-18 | 47 | 1.12d |
| 49 |  | 我的订单 | 2d | 2020-05-18 | 2020-05-20 | 48 | 1.12d |
| 50 |  | 我的钱包 | 2d | 2020-05-20 | 2020-05-22 | 49 | 1.12d |
| 51 |  | 我的积分 | 1d? | 2020-05-22 | 2020-05-25 | 50 | 1.12d |
| 52 |  | 应用设置 | 2d | 2020-05-25 | 2020-05-27 | 51 | 1.12d |
| 53 |  | 意见反馈 | 2d | 2020-05-27 | 2020-05-29 | 52 | 1.12d |
| 54 |  | iBaby会员商城 | 6d | 2020-05-29 | 2020-06-08 | 53 | 1.12d |
| 55 | 3.2.2 | **故事模块** | 20d | 2020-05-11 | 2020-06-05 |  |  |
| 56 |  | 签到 | 1d? | 2020-05-12 | 2020-05-13 | 44 | 3.88d |
| 57 |  | 搜索故事 | 1d? | 2020-05-13 | 2020-05-14 | 56 | 3.88d |
| 58 |  | 搜索历史 | 1d? | 2020-05-14 | 2020-05-15 | 57 | 3.88d |
| 59 |  | 推荐故事 | 2d | 2020-05-15 | 2020-05-19 | 58 | 3.88d |
| 60 |  | 故事分类 | 3d | 2020-05-19 | 2020-05-22 | 59 | 3.88d |
| 61 |  | 故事播放 | 2d | 2020-05-22 | 2020-05-26 | 60 | 3.88d |
| 62 |  | 收藏故事 | 1d? | 2020-05-26 | 2020-05-27 | 61 | 3.88d |
| 63 |  | 购买专辑 | 1d | 2020-05-27 | 2020-05-28 | 62 | 3.88d |
| 64 |  | 实时轮播信息 | 3d | 2020-05-28 | 2020-06-02 | 63 |  |
| 65 | 3.2.3 | **发现模块** | 19d | 2020-05-08 | 2020-06-04 |  |  |
| 66 |  | 搜索发现 | 1d? | 2020-05-08 | 2020-05-11 | 44 | 0.75d |
| 67 |  | 有奖参与 | 3d | 2020-05-11 | 2020-05-14 | 66 | 0.75d |
| 68 |  | 活动刷新 | 1d? | 2020-05-14 | 2020-05-15 | 67 | 0.75d |
| 69 |  | 特价书籍 | 2d | 2020-05-15 | 2020-05-19 | 68 | 0.75d |
| 70 |  | 家长课堂 | 3d | 2020-05-19 | 2020-05-22 | 69 | 0.75d |

| ID | WBS | Task | Duration | Start | Finish | Predecessors | Total float | Constraint |
| --- | --- | --- | --- | --- | --- | --- | --- | --- |
| 71 |  | 文章推荐 | 3d | 2020-05-22 | 2020-05-27 | 70 | 0.75d |  |
| 72 |  | 文章收藏 | 1d | 2020-05-27 | 2020-05-28 | 71 | 0.75d |  |
| 73 |  | 文章点赞 | 1d | 2020-05-28 | 2020-05-29 | 72 | 0.75d |  |
| 74 |  | 文章评论 | 1d | 2020-05-29 | 2020-06-01 | 73 | 0.75d |  |
| 75 |  | 文章分享 | 1d | 2020-06-01 | 2020-06-02 | 74 | 0.75d |  |
| 76 |  | 浏览历史 | 1d | 2020-06-02 | 2020-06-03 | 75 | 0.75d |  |
| 77 | 3.3 | **项目监控** | 6d | 2020-05-06 | 2020-05-13 |  |  |  |
| 78 |  | 各项指标监控 | 2d | 2020-05-07 | 2020-05-12 | 44 |  |  |
| 79 |  | 监控评审 | 1d | 2020-05-12 | 2020-05-13 | 78 | 0d |  |
| 80 |  | 变更评审 | 0.12d | 2020-05-13 | 2020-05-13 | 79 |  |  |
| 81 |  | 例会 | 1d? | 2020-05-06 | 2020-05-07 | 44 | 4.88d |  |
| 82 | 3.4 | **管理干系人** | 8d | 2020-05-06 | 2020-05-15 |  |  |  |
| 83 |  | 发布项目信息 | 0.12d | 2020-05-06 | 2020-05-06 | 44 |  | finish no earlier than 2020-05-06 |
| 84 |  | 报告监控指标 | 1d | 2020-05-06 | 2020-05-07 | 44 |  |  |
| 85 |  | 干系人沟通 | 2d | 2020-05-14 | 2020-05-15 | 44 | 21.88d | finish no earlier than 2020-05-15 |
| 86 | 3.5 | **团队建设** | 9d | 2020-05-06 | 2020-05-19 |  |  |  |
| 87 |  | 培训 | 5d | 2020-05-07 | 2020-05-18 | 44 | 0.38d |  |
| 88 |  | 娱乐活动 | 2d | 2020-05-06 | 2020-05-14 | 44 | 2.88d |  |
| 89 |  | 沟通 | 1d | 2020-05-07 | 2020-05-11 | 44 | 5.88d |  |
| 90 |  | 采购 | 12d | 2020-05-07 | 2020-06-01 | 44 | 8d |  |
| 91 |  | 项目验收 | 1d | 2020-06-10 | 2020-06-10 | 45 | 0.12d |  |
| 92 | 4 | **收尾** | 3d | 2020-06-11 | 2020-06-16 |  |  |  |
| 93 |  | 项目终验 | 1d | 2020-06-11 | 2020-06-12 | 91 | 2d |  |
| 94 |  | 结束采购 | 1d | 2020-06-15 | 2020-06-15 | 91 | 0.88d |  |
| 95 |  | 项目内部收尾 | 1d | 2020-06-14 | 2020-06-15 | 91 | 0.88d |  |

## Version 2 (saved 2020-04-25)

Last finish 2020-06-16 → 2020-07-07 (+21d).

Changed:

| ID | Task | Start | Finish | Duration | Total float | Predecessors | Other |
| --- | --- | --- | --- | --- | --- | --- | --- |
| 43 | **执行与监控** |  | 2020-06-11 → 2020-07-07 (+26d) | 28d → 46.62d? | none → 0d |  |  |
| 44 | 组建项目团队 |  |  |  |  |  | resources 颜枫桦; 陈雅楠; 乔子璇; 赵语涵; 刘钶妍 → 颜枫桦; 陈雅楠; 赵语涵; 刘钶妍; 乔子璇 |
| 45 | **项目执行** |  | 2020-06-09 → 2020-06-24 (+15d) | 23d → 33.12d? | none → 0d |  |  |
| 47 | 登录注册 | 2020-05-11 → 2020-05-08 (-3d) | 2020-05-14 → 2020-05-13 (-1d) |  | 1.12d → 4.75d |  | resources 刘钶妍 → 乔子璇 |
| 48 | 我的收藏 | 2020-05-14 → 2020-05-13 (-1d) | 2020-05-18 → 2020-05-15 (-3d) |  | 1.12d → 4.75d |  | resources 刘钶妍 → 乔子璇 |
| 49 | 我的订单 | 2020-05-18 → 2020-05-15 (-3d) | 2020-05-20 → 2020-05-19 (-1d) |  | 1.12d → 4.75d |  | resources 刘钶妍 → 乔子璇 |
| 50 | 我的钱包 | 2020-05-20 → 2020-05-19 (-1d) | 2020-05-22 → 2020-05-21 (-1d) |  | 1.12d → 4.75d |  | resources 刘钶妍 → 乔子璇 |
| 51 | 我的积分 | 2020-05-22 → 2020-05-21 (-1d) | 2020-05-25 → 2020-05-22 (-3d) |  | 1.12d → 4.75d |  | resources 刘钶妍 → 乔子璇 |
| 52 | 应用设置 | 2020-05-25 → 2020-05-22 (-3d) | 2020-05-27 → 2020-05-26 (-1d) |  | 1.12d → 4.75d |  | resources 刘钶妍 → 乔子璇 |
| 53 | 意见反馈 | 2020-05-27 → 2020-05-26 (-1d) | 2020-05-29 → 2020-05-28 (-1d) |  | 1.12d → 4.75d |  | resources 刘钶妍 → 乔子璇 |
| 54 | iBaby会员商城 | 2020-05-29 → 2020-05-28 (-1d) | 2020-06-08 → 2020-06-03 (-5d) | 6d → 4.12d | 1.12d → 4.75d |  | resources 刘钶妍; 乔子璇 → 乔子璇 |
| 55 | **故事模块** | 2020-05-11 → 2020-06-03 (+23d) | 2020-06-05 → 2020-06-24 (+19d) | 20d → 15d? | none → 5.62d |  |  |
| 56 | 签到 | 2020-05-12 → 2020-06-03 (+22d) | 2020-05-13 → 2020-06-04 (+22d) |  | 3.88d → 5.62d | 44 → 54 |  |
| 57 | 搜索故事 | 2020-05-13 → 2020-06-04 (+22d) | 2020-05-14 → 2020-06-05 (+22d) |  | 3.88d → 5.62d |  |  |
| 58 | 搜索历史 | 2020-05-14 → 2020-06-05 (+22d) | 2020-05-15 → 2020-06-08 (+24d) |  | 3.88d → 5.62d |  |  |
| 59 | 推荐故事 | 2020-05-15 → 2020-06-08 (+24d) | 2020-05-19 → 2020-06-10 (+22d) |  | 3.88d → 5.62d |  |  |
| 60 | 故事分类 | 2020-05-19 → 2020-06-10 (+22d) | 2020-05-22 → 2020-06-15 (+24d) |  | 3.88d → 5.62d |  |  |
| 61 | 故事播放 | 2020-05-22 → 2020-06-15 (+24d) | 2020-05-26 → 2020-06-17 (+22d) |  | 3.88d → 5.62d |  |  |
| 62 | 收藏故事 | 2020-05-26 → 2020-06-17 (+22d) | 2020-05-27 → 2020-06-18 (+22d) |  | 3.88d → 5.62d |  |  |
| 63 | 购买专辑 | 2020-05-27 → 2020-06-18 (+22d) | 2020-05-28 → 2020-06-19 (+22d) |  | 3.88d → 5.62d |  |  |
| 64 | 实时轮播信息 | 2020-05-28 → 2020-06-19 (+22d) | 2020-06-02 → 2020-06-24 (+22d) |  | none → 5.62d |  |  |
| 65 | **发现模块** |  | 2020-06-04 → 2020-06-05 (+1d) | 19d → 20.38d? | none → 18.38d |  |  |
| 69 | 特价书籍 |  | 2020-05-19 → 2020-05-21 (+2d) |  | 0.75d → 18.38d |  |  |
| 70 | 家长课堂 | 2020-05-19 → 2020-05-21 (+2d) | 2020-05-22 → 2020-05-26 (+4d) |  | 0.75d → 18.38d |  |  |
| 71 | 文章推荐 | 2020-05-22 → 2020-05-26 (+4d) | 2020-05-27 → 2020-05-29 (+2d) |  | 0.75d → 18.38d |  |  |
| 72 | 文章收藏 | 2020-05-27 → 2020-05-29 (+2d) | 2020-05-28 → 2020-06-01 (+4d) |  | 0.75d → 18.38d |  |  |
| 73 | 文章点赞 | 2020-05-28 → 2020-06-01 (+4d) | 2020-05-29 → 2020-06-02 (+4d) |  | 0.75d → 18.38d |  |  |
| 74 | 文章评论 | 2020-05-29 → 2020-06-02 (+4d) | 2020-06-01 → 2020-06-03 (+2d) |  | 0.75d → 18.38d |  |  |
| 75 | 文章分享 | 2020-06-01 → 2020-06-03 (+2d) | 2020-06-02 → 2020-06-04 (+2d) |  | 0.75d → 18.38d |  |  |
| 76 | 浏览历史 | 2020-06-02 → 2020-06-04 (+2d) | 2020-06-03 → 2020-06-05 (+2d) |  | 0.75d → 18.38d |  |  |
| 77 | **项目监控** |  | 2020-05-13 → 2020-05-18 (+5d) | 6d → 8.88d? | none → 1d |  |  |
| 80 | 变更评审 |  |  |  |  |  | resources 刘钶妍; 颜枫桦; 陈雅楠; 马增来 → none |
| 81 | 例会 |  | 2020-05-07 → 2020-05-18 (+11d) | 1d? → 3d? | 4.88d → 35.75d |  | resources 刘钶妍; 颜枫桦; 赵语涵 → 陈雅楠; 颜枫桦; 乔子璇; 赵语涵 |
| 86 | **团队建设** |  | 2020-05-19 → 2020-07-07 (+49d) | 9d → 44.62d | none → 0d |  |  |
| 87 | 培训 | 2020-05-07 → 2020-05-06 (-1d) | 2020-05-18 → 2020-07-07 (+50d) | 5d → 10.75d | 0.38d → 0d |  | resources 刘钶妍; 颜枫桦; 陈雅楠; 乔子璇; 赵语涵 → 刘钶妍; 颜枫桦; 陈雅楠; 赵语涵; 乔子璇 |
| 88 | 娱乐活动 |  | 2020-05-14 → 2020-05-13 (-1d) | 2d → 2.88d | 2.88d → 38.75d |  | resources 刘钶妍; 颜枫桦; 陈雅楠; 乔子璇; 赵语涵 → 刘钶妍; 颜枫桦; 陈雅楠; 赵语涵 |
| 89 | 沟通 | 2020-05-07 → 2020-05-06 (-1d) | 2020-05-11 → 2020-06-29 (+49d) | 1d → 1.12d | 5.88d → 6.25d |  |  |
| 91 | 项目验收 | 2020-06-10 → 2020-06-24 (+14d) | 2020-06-10 → 2020-06-25 (+15d) |  | 0.12d → 5.62d |  | resources 刘钶妍; 颜枫桦; 陈雅楠; 马增来; 乔子璇; 赵语涵 → 刘钶妍; 颜枫桦; 陈雅楠; 马增来; 赵语涵 |
| 92 | **收尾** | 2020-06-11 → 2020-06-25 (+14d) | 2020-06-16 → 2020-06-30 (+14d) | 3d → 2.88d | none → 5.62d |  |  |
| 93 | 项目终验 | 2020-06-11 → 2020-06-25 (+14d) | 2020-06-12 → 2020-06-26 (+14d) |  | 2d → 7.5d |  |  |
| 94 | 结束采购 | 2020-06-15 → 2020-06-29 (+14d) | 2020-06-15 → 2020-06-29 (+14d) |  | 0.88d → 5.75d |  |  |
| 95 | 项目内部收尾 | 2020-06-14 → 2020-06-26 (+12d) | 2020-06-15 → 2020-06-30 (+15d) | 1d → 1.75d | 0.88d → 5.62d |  |  |
